# TrilinosRelease5

Schedule from MS Project, 2004-11-23 to 2005-03-01, scheduled back from the finish.
Sandia National Labs

## Calendars

- Standard: Mon-Fri 08:00-12:00, 13:00-17:00; Sat-Sun off. Exceptions (off unless hours are given): 2004-11-25 to 2004-11-26, 2004-12-24, 2004-12-27 to 2004-12-31, 2005-01-03.

## Schedule

| ID | WBS | Task | Type | Duration | Start | Finish | Predecessors | Total slack | Free slack | Constraint |
| --- | --- | --- | --- | --- | --- | --- | --- | --- | --- | --- |
| 1 | 1 | Verify which packages are to be included in the release |  | 30min | 2004-11-24 16:30 | 2004-11-24 17:00 |  | 1.75d | 0d | finish no later than 2004-11-24 17:00 |
| 2 | 2 | Figure out which packages need to go through the copyright process |  | 30min | 2004-11-29 16:30 | 2004-11-29 17:00 | 1 | 0.94d | 0d | finish no later than 2004-11-29 17:00 |
| 3 | 3 | Complete copyright process for packages that are to be released and are not copyrighted |  | 20d | 2005-01-12 08:00 | 2005-02-08 17:00 | 2 | 24d | 0d | finish no later than 2005-02-08 17:00 |
| 4 | 4 | Send note to developers about updating compiler check list in configure.ac |  | 30min | 2004-11-23 09:30 | 2004-11-23 10:00 |  | 0d |  | as late as possible |
| 5 | 5 | Update compiler selection list |  | 6h | 2004-11-30 10:00 | 2004-11-30 17:00 | 4FS+3d | 0d |  | as late as possible |
| 6 | 6 | Do initial verification of builds on important platforms |  | 30d | 2004-12-01 08:00 | 2005-01-20 17:00 | 1, 5 | 0d |  | finish no later than 2005-01-20 17:00 |
| 7 | 7 | Implement make check |  | 4d | 2004-12-13 08:00 | 2004-12-16 17:00 |  | 11.81d | 0d | finish no later than 2004-12-16 17:00 |
| 8 | 8 | Clarify TSF package structure |  | 2d | 2004-12-08 08:00 | 2004-12-09 17:00 |  | 8.81d | 0d | finish no later than 2004-12-09 17:00 |
| 9 | 9 | Autotool Pliris |  | 5h | 2004-12-01 11:00 | 2004-12-01 17:00 |  | 4.19d | 0d | finish no later than 2004-12-01 17:00 |
| 10 | 10 | Integrate cmmlib into top level |  | 3d | 2004-11-29 08:00 | 2004-12-01 17:00 |  | 1.81d | 0d | start no later than 2004-11-29 08:00 |
| 11 | 11 | **Implement Software Quality Plan requirements** |  | 3d | 2005-01-27 08:00 | 2005-01-31 17:00 |  | 37.81d | 0d | as late as possible |
| 12 | 11.1 | Create SQP checklists |  | 3d | 2005-01-27 08:00 | 2005-01-31 17:00 |  | 37.81d | 0d | finish no later than 2005-02-05 17:00 |
| 13 | 12 | Document that requirements are satisfied (package level) |  | 3d | 2005-02-04 08:00 | 2005-02-08 17:00 |  | 43.81d | 0d | finish no later than 2005-02-08 17:00 |
| 14 | 13 | Packages need to support make dist |  | 4d | 2004-12-13 08:00 | 2004-12-16 17:00 |  | 11.81d | 0d | finish no later than 2004-12-16 17:00 |
| 15 | 14 | Send email about repository freeze |  | 30min | 2005-01-10 08:00 | 2005-01-10 08:30 |  | 24.81d | 0d | start no later than 2005-01-10 08:00 |
| 16 | 15 | Freeze repository | milestone | 0d | 2005-02-01 08:00 | 2005-02-01 08:00 | 1, 6, 7, 9, 11SS, 12, 14, 15, 10, 5, 8 | 7d | 0d | start no later than 2005-02-01 08:00 |
| 17 | 16 | Create 5.0 release branch |  | 2.5h | 2005-02-01 14:00 | 2005-02-01 16:30 | 16 | 7.62d | 0d | finish no later than 2005-02-01 17:00 |
| 18 | 17 | Send note to dev list including name of release branch |  | 30min | 2005-02-01 16:30 | 2005-02-01 17:00 | 17 | 0d |  | must finish on 2005-02-01 17:00 |
| 19 | 18 | Sierra Verification testing |  | 8d | 2005-02-02 08:00 | 2005-02-11 17:00 | 18 | 0d |  | finish no later than 2005-02-11 17:00 |
| 20 | 19 | Alegra Verification testing |  | 16d | 2005-02-03 08:00 | 2005-02-24 17:00 | 18, 19SS+1d | 0d |  | finish no later than 2005-02-24 17:00 |
| 21 | 20 | Set up the Trilinos 5.0 website |  | 2d | 2005-02-02 15:24 | 2005-02-04 15:24 | 18 | 0.8d | 0d | finish no later than 2005-02-04 15:24 |
| 22 | 21 | Set up 5.0 test harness runs |  | 7d | 2005-02-03 08:00 | 2005-02-11 17:00 | 17 | 8.69d | 0d | finish no later than 2005-02-11 17:00 |
| 23 | 22 | Send request to developers for release notes |  | 30min | 2005-02-02 08:00 | 2005-02-02 08:30 | 18 | 0d |  | start no later than 2005-02-02 08:00 |
| 24 | 23 | Add release notes to repository, tarball and web |  | 1h | 2005-02-25 16:00 | 2005-02-25 17:00 | 23FS+3d, 21 | 14.81d | 0d | finish no later than 2005-02-25 17:00 |
| 25 | 24 | Send note to dev list to encourage package developers to send a note to their user lists about new release features |  | 30min | 2005-02-25 08:00 | 2005-02-25 08:30 | 19, 20 | 0d |  | finish no later than 2005-02-25 08:30 |
| 26 | 25 | Create preliminary version of distribution tarball |  | 3.5h | 2005-02-02 08:00 | 2005-02-02 11:30 | 17, 14 | 7.69d | 0d | finish no later than 2005-02-02 11:30 |
| 27 | 26 | Obtain permission for release from Project Leader |  | 3h | 2005-02-25 14:30 | 2005-02-28 08:30 | 26 | 24.94d | 0d | as late as possible |
| 28 | 27 | Regenerate tarball and post on 5.0 website |  | 1.5h | 2005-02-28 08:30 | 2005-02-28 10:00 | 19, 20, 27 | 1.06d | 0d | finish no later than 2005-02-28 10:00 |
| 29 | 28 | Announce release via Trilinos-Announce list | milestone | 30min | 2005-03-01 16:30 | 2005-03-01 17:00 | 28 | 2.75d | 0d | as late as possible |

Notes:
- 1: Send a note to dev list. Include a note about copyrighting.
- 2: Contact developers as necessary
- 14: Contact packages sequentially about verifying their portion of tarball for best results.

| ID | WBS | Task | Duration | Start | Finish | Total slack | Free slack | Constraint |
| --- | --- | --- | --- | --- | --- | --- | --- | --- |
| 30 | 29 | **SQP checkup** | 53.38d | 2004-11-30 08:00 | 2005-02-22 11:00 | 2.81d | 0d | as late as possible |
| 31 | 29.1 | SQP checkup 1 | 3h | 2004-11-30 08:00 | 2004-11-30 11:00 | 2.81d | 0d | start no later than 2004-11-30 08:00 |
| 32 | 29.2 | SQP checkup 2 | 3h | 2004-12-14 08:00 | 2004-12-14 11:00 | 12.81d | 0d | start no later than 2004-12-14 08:00 |
| 33 | 29.3 | SQP checkup 3 | 3h | 2005-01-11 08:00 | 2005-01-11 11:00 | 25.81d | 0d | start no later than 2005-01-11 08:00 |
| 34 | 29.4 | SQP checkup 4 | 3h | 2005-01-25 08:00 | 2005-01-25 11:00 | 35.81d | 0d | start no later than 2005-01-25 08:00 |
| 35 | 29.5 | SQP checkup 5 | 3h | 2005-02-08 08:00 | 2005-02-08 11:00 | 45.81d | 0d | start no later than 2005-02-08 08:00 |
| 36 | 29.6 | SQP checkup 6 | 3h | 2005-02-22 08:00 | 2005-02-22 11:00 | 55.81d | 0d | start no later than 2005-02-22 08:00 |
